# Fabricação e Fornecimento do Tanque de Armazenamento TQ-960-30/1 (API 650) – Obra 2026-000037

How a schedule from MS Project XML changed from version to version. A marks actual dates.

## Version 1 (saved 2026-08-24)

Note of the change: feat: direcionar saida de todos os artefatos para a pasta convertidos do projeto

| ID | WBS | Task | Duration | Start | Finish | Predecessors |
| --- | --- | --- | --- | --- | --- | --- |
| 1 |  | Fabricação e Fornecimento do Tanque de Armazenamento TQ-960-30/1 (API 650) – Obra 2026-000037 | 142d | 2026-08-31 | 2027-01-20 |  |
| 2 | 1.0 | **1.0 ATIVIDADES (Peso: 2%)** | 3d | 2026-08-31 | 2026-09-03 |  |
| 3 |  | Kick-off Meeting & Alinhamento de Requisitos (Oxiteno S.A. / Grupo Indorama) | 1d | 2026-08-31 | 2026-09-01 |  |
| 4 |  | Formalização do Termo de Abertura do Projeto (TAP) & Governança | 1d | 2026-09-02 | 2026-09-03 | 3 |
| 5 | 2.0 | **2.0 METODOS E PROCESSOS (Peso: 20%)** | 27d | 2026-09-04 | 2026-10-01 |  |
| 6 |  | Projeto Executivo & Detalhamento Mecânico 2D/3D (TQ-0960-30) | 4.25d | 2026-09-04 | 2026-09-11 | 4 |
| 7 |  | Memórias de Cálculo Estrutural e Pressão (API 650 / ASME) | 3.5d | 2026-09-14 | 2026-09-18 | 6 |
| 8 |  | Elaboração do PIT (Plano de Inspeção e Testes) e EPS/RQPS | 2.75d | 2026-09-21 | 2026-09-24 | 7 |
| 9 |  | Submissão, Análise e Aprovação Técnica pelo Cliente | 3.5d | 2026-09-25 | 2026-10-01 | 8 |
| 10 | 3.0 | **3.0 SUPRIMENTOS (Peso: 30%)** | 35d | 2026-10-02 | 2026-11-06 |  |
| 11 |  | Requisição de Compras & Cotação de Matérias-Primas Inox | 3.12d | 2026-10-02 | 2026-10-08 | 9 |
| 12 |  | Fabricação e Entrega de Chapas Inox SA-240 304 e Tubos pela Usina | 12.75d | 2026-10-09 | 2026-10-28 | 11 |
| 13 |  | Aquisição de Forjados, Flanges, Juntas PTFE e Estojos (Paralelo) | 6.38d | 2026-10-09 | 2026-10-20 | 11 |
| 14 |  | Recebimento, Inspeção Dimensional e Rastreabilidade de MP na Fábrica | 5.25d | 2026-10-29 | 2026-11-06 | 12, 13 |
| 15 | 4.0 | **4.0 FABRICAÇÃO E MONTAGEM (Peso: 40%)** | 53d | 2026-11-09 | 2027-01-01 |  |
| 16 |  | Traçado, Corte a Plasma e Chanfro das Chapas do Costado e Fundo | 4.25d | 2026-11-09 | 2026-11-16 | 14 |
| 17 |  | Calandragem das Virolas e Pré-Montagem dos Aneis do Costado | 4.25d | 2026-11-17 | 2026-11-24 | 16 |
| 18 |  | Soldagem das Juntas Longitudinais e Circunferencias (ASME IX) | 7d | 2026-11-25 | 2026-12-07 | 17 |
| 19 |  | Montagem e Soldagem do Fundo Plano e Teto Cônico Autoportante | 4.25d | 2026-12-08 | 2026-12-15 | 18 |
| 20 |  | Fabricação/Instalação de Bocais A1-W1, Boca de Visita M1 e Acessórios | 4.25d | 2026-12-16 | 2026-12-23 | 19 |
| 21 |  | Execução de Ensaios END (Radiografia RX, LP, Caixa de Vácuo e PMI) | 2.25d | 2026-12-24 | 2026-12-29 | 20 |
| 22 |  | Preparação e Execução do Teste Hidrostático (TH) Fabril | 2d | 2026-12-30 | 2027-01-01 | 21 |
| 23 | 5.0 | **5.0 PINTURA (Peso: 7%)** | 8d | 2027-01-04 | 2027-01-12 |  |
| 24 |  | Decapagem Química e Passivação Integral das Superfícies em Aço Inox | 3d | 2027-01-04 | 2027-01-07 | 22 |
| 25 |  | Jateamento e Pintura Externa dos Acessórios em Aço Carbono (Munsell 5Y 8/12) | 2d | 2027-01-08 | 2027-01-12 | 24 |
| 26 | 6.0 | **6.0 EXPEDIÇÃO (Peso: 1%)** | 7d | 2027-01-13 | 2027-01-20 |  |
| 27 |  | Emissão, Compilação e Aprovação do Data Book Final com ART (SOP-BRA-019-01) | 1d | 2027-01-13 | 2027-01-14 | 25 |
| 28 |  | Embalagem Especial, Fabricação do Berço e Carregamento | 1d | 2027-01-15 | 2027-01-18 | 27 |
| 29 |  | Transporte Rodoviário Especial CIF e Entrega Técnica no Polo Camaçari/BA | 1d | 2027-01-19 | 2027-01-20 | 28 |

## Version 2 (saved 2026-08-26)

Note of the change: feat: dimensionamento e alocacao de recursos industriais com histograma temporal de efetivo e exportacao de tags de recursos no MS Project

Last finish 2027-01-20 → 2027-01-07 (-13d).

Removed: 1 Fabricação e Fornecimento do Tanque de Armazenamento TQ-960-30/1 (API 650) – Obra 2026-000037

Changed:

| ID | Task | Start | Finish | Duration | Other |
| --- | --- | --- | --- | --- | --- |
| 2 | Kick-off Meeting & Alinhamento de Requisitos (Oxiteno S.A. / Grupo Indorama) |  |  |  | resources none → Engenheiro Mecânico de Projetos / Cálculos; Projetista Mecânico / Modelador 3D |
| 3 | Formalização do Termo de Abertura do Projeto (TAP) & Governança |  |  |  | resources none → Engenheiro Mecânico de Projetos / Cálculos |
| 4 | **2.0 METODOS E PROCESSOS (Peso: 20%)** |  | 2026-10-01 → 2026-09-30 (-1d) | 27d → 26d |  |
| 5 | Projeto Executivo & Detalhamento Mecânico 2D/3D (TQ-0960-30) |  | 2026-09-11 → 2026-09-10 (-1d) |  | resources none → Projetista Mecânico / Modelador 3D; Engenheiro Mecânico de Projetos / Cálculos [50%] |
| 6 | Memórias de Cálculo Estrutural e Pressão (API 650 / ASME) | 2026-09-14 → 2026-09-11 (-3d) | 2026-09-18 → 2026-09-17 (-1d) |  | resources none → Engenheiro Mecânico de Projetos / Cálculos |
| 7 | Elaboração do PIT (Plano de Inspeção e Testes) e EPS/RQPS | 2026-09-21 → 2026-09-18 (-3d) | 2026-09-24 → 2026-09-23 (-1d) |  | resources none → Engenheiro Mecânico de Projetos / Cálculos [50%]; Inspetor de Soldagem / END Nível II (SNQC) |
| 8 | Submissão, Análise e Aprovação Técnica pelo Cliente | 2026-09-25 → 2026-09-24 (-1d) | 2026-10-01 → 2026-09-30 (-1d) |  | resources none → Engenheiro Mecânico de Projetos / Cálculos [50%] |
| 9 | **3.0 SUPRIMENTOS (Peso: 30%)** | 2026-10-02 → 2026-10-01 (-1d) | 2026-11-06 → 2026-11-03 (-3d) | 35d → 33d |  |
| 10 | Requisição de Compras & Cotação de Matérias-Primas Inox | 2026-10-02 → 2026-10-01 (-1d) | 2026-10-08 → 2026-10-06 (-2d) |  | resources none → Comprador Técnico Industrial / Diligenciamento |
| 11 | Fabricação e Entrega de Chapas Inox SA-240 304 e Tubos pela Usina | 2026-10-09 → 2026-10-07 (-2d) | 2026-10-28 → 2026-10-26 (-2d) |  | resources none → Comprador Técnico Industrial / Diligenciamento [25%] |
| 12 | Aquisição de Forjados, Flanges, Juntas PTFE e Estojos (Paralelo) | 2026-10-09 → 2026-10-07 (-2d) | 2026-10-20 → 2026-10-15 (-5d) |  | resources none → Comprador Técnico Industrial / Diligenciamento [50%] |
| 13 | Recebimento, Inspeção Dimensional e Rastreabilidade de MP na Fábrica | 2026-10-29 → 2026-10-27 (-2d) | 2026-11-06 → 2026-11-03 (-3d) |  | resources none → Inspetor de Soldagem / END Nível II (SNQC); Ajudante Operacional de Caldeiraria e Fábrica |
| 14 | **4.0 FABRICAÇÃO E MONTAGEM (Peso: 40%)** | 2026-11-09 → 2026-11-04 (-5d) | 2027-01-01 → 2026-12-21 (-11d) | 53d → 47d |  |
| 15 | Traçado, Corte a Plasma e Chanfro das Chapas do Costado e Fundo | 2026-11-09 → 2026-11-04 (-5d) | 2026-11-16 → 2026-11-10 (-6d) |  | resources none → Caldeireiro de Traçado e Corte Plasma; Ajudante Operacional de Caldeiraria e Fábrica |
| 16 | Calandragem das Virolas e Pré-Montagem dos Aneis do Costado | 2026-11-17 → 2026-11-11 (-6d) | 2026-11-24 → 2026-11-17 (-7d) |  | resources none → Operador de Calandra e Conformação; Ajudante Operacional de Caldeiraria e Fábrica |
| 17 | Soldagem das Juntas Longitudinais e Circunferencias (ASME IX) | 2026-11-25 → 2026-11-18 (-7d) | 2026-12-07 → 2026-11-27 (-10d) |  | resources none → Soldador Qualificado ASME IX (TIG/MIG/SAW) [200%]; Ajudante Operacional de Caldeiraria e Fábrica [200%] |
| 18 | Montagem e Soldagem do Fundo Plano e Teto Cônico Autoportante | 2026-12-08 → 2026-11-30 (-8d) | 2026-12-15 → 2026-12-04 (-11d) |  | resources none → Caldeireiro Montador / Ajustador de Equipamentos [200%]; Soldador Qualificado ASME IX (TIG/MIG/SAW); Ajudante Operacional de Caldeiraria e Fábrica [200%] |
| 19 | Fabricação/Instalação de Bocais A1-W1, Boca de Visita M1 e Acessórios | 2026-12-16 → 2026-12-07 (-9d) | 2026-12-23 → 2026-12-11 (-12d) |  | resources none → Caldeireiro Montador / Ajustador de Equipamentos; Soldador Qualificado ASME IX (TIG/MIG/SAW); Ajudante Operacional de Caldeiraria e Fábrica |
| 20 | Execução de Ensaios END (Radiografia RX, LP, Caixa de Vácuo e PMI) | 2026-12-24 → 2026-12-14 (-10d) | 2026-12-29 → 2026-12-16 (-13d) |  | resources none → Inspetor de Soldagem / END Nível II (SNQC); Ajudante Operacional de Caldeiraria e Fábrica |
| 21 | Preparação e Execução do Teste Hidrostático (TH) Fabril | 2026-12-30 → 2026-12-17 (-13d) | 2027-01-01 → 2026-12-21 (-11d) |  | resources none → Engenheiro Mecânico de Projetos / Cálculos [50%]; Inspetor de Soldagem / END Nível II (SNQC); Caldeireiro Montador / Ajustador de Equipamentos; Ajudante Operacional de Caldeiraria e Fábrica |
| 22 | **5.0 PINTURA (Peso: 7%)** | 2027-01-04 → 2026-12-22 (-13d) | 2027-01-12 → 2026-12-30 (-13d) |  |  |
| 23 | Decapagem Química e Passivação Integral das Superfícies em Aço Inox | 2027-01-04 → 2026-12-22 (-13d) | 2027-01-07 → 2026-12-25 (-13d) |  | resources none → Pintor Industrial / Tratador de Superfície Inox; Ajudante Operacional de Caldeiraria e Fábrica |
| 24 | Jateamento e Pintura Externa dos Acessórios em Aço Carbono (Munsell 5Y 8/12) | 2027-01-08 → 2026-12-28 (-11d) | 2027-01-12 → 2026-12-30 (-13d) |  | resources none → Pintor Industrial / Tratador de Superfície Inox; Ajudante Operacional de Caldeiraria e Fábrica |
| 25 | **6.0 EXPEDIÇÃO (Peso: 1%)** | 2027-01-13 → 2026-12-31 (-13d) | 2027-01-20 → 2027-01-07 (-13d) |  |  |
| 26 | Emissão, Compilação e Aprovação do Data Book Final com ART (SOP-BRA-019-01) | 2027-01-13 → 2026-12-31 (-13d) | 2027-01-14 → 2027-01-01 (-13d) |  | resources none → Engenheiro Mecânico de Projetos / Cálculos; Inspetor de Soldagem / END Nível II (SNQC) [50%] |
| 27 | Embalagem Especial, Fabricação do Berço e Carregamento | 2027-01-15 → 2027-01-04 (-11d) | 2027-01-18 → 2027-01-05 (-13d) |  | resources none → Caldeireiro Montador / Ajustador de Equipamentos; Rigger / Operador de Carga, Berço e Expedição; Ajudante Operacional de Caldeiraria e Fábrica |
| 28 | Transporte Rodoviário Especial CIF e Entrega Técnica no Polo Camaçari/BA | 2027-01-19 → 2027-01-06 (-13d) | 2027-01-20 → 2027-01-07 (-13d) |  | resources none → Rigger / Operador de Carga, Berço e Expedição; Comprador Técnico Industrial / Diligenciamento [25%] |

## Version 3 (saved 2026-08-26)

Note of the change: feat: implementa nivelamento bioinspirado de recursos via Algoritmo Genetico guiado por restricoes estocasticas MCMC-Safe Float

Last finish stays 2027-01-07.

Changed:

| ID | Task | Start | Finish |
| --- | --- | --- | --- |
| 12 | Aquisição de Forjados, Flanges, Juntas PTFE e Estojos (Paralelo) | 2026-10-07 → 2026-10-14 (+7d) | 2026-10-15 → 2026-10-22 (+7d) |

## Version 4 (saved 2026-08-26)

Note of the change: feat: ajusta integracao continua no nivelamento bioinspirado corrigindo prazos e adiciona glossario tecnico completo de 5 paginas

Last finish stays 2027-01-07.

Changed:

| ID | Task | Start | Finish |
| --- | --- | --- | --- |
| 12 | Aquisição de Forjados, Flanges, Juntas PTFE e Estojos (Paralelo) | 2026-10-14 → 2026-10-15 (+1d) | 2026-10-22 → 2026-10-23 (+1d) |

## Version 5 (saved 2026-08-26)

Note of the change: feat: sincroniza histograma de recursos e cronograma MS Project XML com as datas exatas do nivelamento bioinspirado

Last finish 2027-01-07 → 2026-11-25 (-43d).

Changed:

| ID | Task | Start | Finish | Duration |
| --- | --- | --- | --- | --- |
| 1 | **1.0 ATIVIDADES (Peso: 2%)** | 2026-08-31 → 2026-09-01 (+1d) | 2026-09-03 → 2026-09-02 (-1d) | 3d → 1d |
| 2 | Kick-off Meeting & Alinhamento de Requisitos (Oxiteno S.A. / Grupo Indorama) | 2026-08-31 → 2026-09-01 (+1d) |  |  |
| 3 | Formalização do Termo de Abertura do Projeto (TAP) & Governança | 2026-09-02 → 2026-09-01 (-1d) | 2026-09-03 → 2026-09-02 (-1d) |  |
| 4 | **2.0 METODOS E PROCESSOS (Peso: 20%)** | 2026-09-04 → 2026-09-02 (-2d) | 2026-09-30 → 2026-09-22 (-8d) | 26d → 20d |
| 5 | Projeto Executivo & Detalhamento Mecânico 2D/3D (TQ-0960-30) | 2026-09-04 → 2026-09-02 (-2d) | 2026-09-10 → 2026-09-08 (-2d) |  |
| 6 | Memórias de Cálculo Estrutural e Pressão (API 650 / ASME) | 2026-09-11 → 2026-09-08 (-3d) | 2026-09-17 → 2026-09-14 (-3d) |  |
| 7 | Elaboração do PIT (Plano de Inspeção e Testes) e EPS/RQPS | 2026-09-18 → 2026-09-14 (-4d) | 2026-09-23 → 2026-09-17 (-6d) |  |
| 8 | Submissão, Análise e Aprovação Técnica pelo Cliente | 2026-09-24 → 2026-09-17 (-7d) | 2026-09-30 → 2026-09-22 (-8d) |  |
| 9 | **3.0 SUPRIMENTOS (Peso: 30%)** | 2026-10-01 → 2026-09-08 (-23d) | 2026-11-03 → 2026-10-08 (-26d) | 33d → 30d |
| 10 | Requisição de Compras & Cotação de Matérias-Primas Inox | 2026-10-01 → 2026-09-08 (-23d) | 2026-10-06 → 2026-09-14 (-22d) |  |
| 11 | Fabricação e Entrega de Chapas Inox SA-240 304 e Tubos pela Usina | 2026-10-07 → 2026-09-14 (-23d) | 2026-10-26 → 2026-09-30 (-26d) |  |
| 12 | Aquisição de Forjados, Flanges, Juntas PTFE e Estojos (Paralelo) | 2026-10-15 → 2026-09-14 (-31d) | 2026-10-23 → 2026-09-22 (-31d) |  |
| 13 | Recebimento, Inspeção Dimensional e Rastreabilidade de MP na Fábrica | 2026-10-27 → 2026-09-30 (-27d) | 2026-11-03 → 2026-10-08 (-26d) |  |
| 14 | **4.0 FABRICAÇÃO E MONTAGEM (Peso: 40%)** | 2026-11-04 → 2026-10-08 (-27d) | 2026-12-21 → 2026-11-13 (-38d) | 47d → 36d |
| 15 | Traçado, Corte a Plasma e Chanfro das Chapas do Costado e Fundo | 2026-11-04 → 2026-10-08 (-27d) | 2026-11-10 → 2026-10-14 (-27d) |  |
| 16 | Calandragem das Virolas e Pré-Montagem dos Aneis do Costado | 2026-11-11 → 2026-10-14 (-28d) | 2026-11-17 → 2026-10-20 (-28d) |  |
| 17 | Soldagem das Juntas Longitudinais e Circunferencias (ASME IX) | 2026-11-18 → 2026-10-20 (-29d) | 2026-11-27 → 2026-10-27 (-31d) |  |
| 18 | Montagem e Soldagem do Fundo Plano e Teto Cônico Autoportante | 2026-11-30 → 2026-10-27 (-34d) | 2026-12-04 → 2026-11-02 (-32d) |  |
| 19 | Fabricação/Instalação de Bocais A1-W1, Boca de Visita M1 e Acessórios | 2026-12-07 → 2026-11-02 (-35d) | 2026-12-11 → 2026-11-06 (-35d) |  |
| 20 | Execução de Ensaios END (Radiografia RX, LP, Caixa de Vácuo e PMI) | 2026-12-14 → 2026-11-06 (-38d) | 2026-12-16 → 2026-11-11 (-35d) |  |
| 21 | Preparação e Execução do Teste Hidrostático (TH) Fabril | 2026-12-17 → 2026-11-11 (-36d) | 2026-12-21 → 2026-11-13 (-38d) |  |
| 22 | **5.0 PINTURA (Peso: 7%)** | 2026-12-22 → 2026-11-13 (-39d) | 2026-12-30 → 2026-11-20 (-40d) | 8d → 7d |
| 23 | Decapagem Química e Passivação Integral das Superfícies em Aço Inox | 2026-12-22 → 2026-11-13 (-39d) | 2026-12-25 → 2026-11-18 (-37d) |  |
| 24 | Jateamento e Pintura Externa dos Acessórios em Aço Carbono (Munsell 5Y 8/12) | 2026-12-28 → 2026-11-18 (-40d) | 2026-12-30 → 2026-11-20 (-40d) |  |
| 25 | **6.0 EXPEDIÇÃO (Peso: 1%)** | 2026-12-31 → 2026-11-20 (-41d) | 2027-01-07 → 2026-11-25 (-43d) | 7d → 5d |
| 26 | Emissão, Compilação e Aprovação do Data Book Final com ART (SOP-BRA-019-01) | 2026-12-31 → 2026-11-20 (-41d) | 2027-01-01 → 2026-11-23 (-39d) |  |
| 27 | Embalagem Especial, Fabricação do Berço e Carregamento | 2027-01-04 → 2026-11-23 (-42d) | 2027-01-05 → 2026-11-24 (-42d) |  |
| 28 | Transporte Rodoviário Especial CIF e Entrega Técnica no Polo Camaçari/BA | 2027-01-06 → 2026-11-24 (-43d) | 2027-01-07 → 2026-11-25 (-43d) |  |

## Version 6 (saved 2026-08-26)

Note of the change: fix: resolve conflito de restricoes e predecessoras no MS Project XML com calculo exato de calendario e DurationFormat

Last finish 2026-11-25 → 2026-11-23 (-2d).

Changed:

| ID | Task | Start | Finish | Duration |
| --- | --- | --- | --- | --- |
| 1 | **1.0 ATIVIDADES (Peso: 2%)** | 2026-09-01 → 2026-08-31 (-1d) | 2026-09-02 → 2026-09-01 (-1d) | 1d → 2d? |
| 2 | Kick-off Meeting & Alinhamento de Requisitos (Oxiteno S.A. / Grupo Indorama) | 2026-09-01 → 2026-08-31 (-1d) | 2026-09-01 → 2026-08-31 (-1d) | 1d → 1d? |
| 3 | Formalização do Termo de Abertura do Projeto (TAP) & Governança |  | 2026-09-02 → 2026-09-01 (-1d) | 1d → 1d? |
| 4 | **2.0 METODOS E PROCESSOS (Peso: 20%)** |  | 2026-09-22 → 2026-09-21 (-1d) | 20d → 20d? |
| 5 | Projeto Executivo & Detalhamento Mecânico 2D/3D (TQ-0960-30) |  |  | 4.25d → 4.25d? |
| 6 | Memórias de Cálculo Estrutural e Pressão (API 650 / ASME) |  | 2026-09-14 → 2026-09-11 (-3d) | 3.5d → 3.5d? |
| 7 | Elaboração do PIT (Plano de Inspeção e Testes) e EPS/RQPS | 2026-09-14 → 2026-09-11 (-3d) | 2026-09-17 → 2026-09-15 (-2d) | 2.75d → 2.75d? |
| 8 | Submissão, Análise e Aprovação Técnica pelo Cliente | 2026-09-17 → 2026-09-16 (-1d) | 2026-09-22 → 2026-09-21 (-1d) | 3.5d → 3.5d? |
| 9 | **3.0 SUPRIMENTOS (Peso: 30%)** |  | 2026-10-08 → 2026-10-07 (-1d) | 30d → 30d? |
| 10 | Requisição de Compras & Cotação de Matérias-Primas Inox |  | 2026-09-14 → 2026-09-11 (-3d) | 3.12d → 3.12d? |
| 11 | Fabricação e Entrega de Chapas Inox SA-240 304 e Tubos pela Usina | 2026-09-14 → 2026-09-11 (-3d) | 2026-09-30 → 2026-09-29 (-1d) | 12.75d → 12.75d? |
| 12 | Aquisição de Forjados, Flanges, Juntas PTFE e Estojos (Paralelo) | 2026-09-14 → 2026-09-11 (-3d) | 2026-09-22 → 2026-09-21 (-1d) | 6.38d → 6.38d? |
| 13 | Recebimento, Inspeção Dimensional e Rastreabilidade de MP na Fábrica |  | 2026-10-08 → 2026-10-07 (-1d) | 5.25d → 5.25d? |
| 14 | **4.0 FABRICAÇÃO E MONTAGEM (Peso: 40%)** | 2026-10-08 → 2026-10-07 (-1d) | 2026-11-13 → 2026-11-11 (-2d) | 36d → 36d? |
| 15 | Traçado, Corte a Plasma e Chanfro das Chapas do Costado e Fundo | 2026-10-08 → 2026-10-07 (-1d) | 2026-10-14 → 2026-10-13 (-1d) | 4.25d → 4.25d? |
| 16 | Calandragem das Virolas e Pré-Montagem dos Aneis do Costado | 2026-10-14 → 2026-10-13 (-1d) | 2026-10-20 → 2026-10-19 (-1d) | 4.25d → 4.25d? |
| 17 | Soldagem das Juntas Longitudinais e Circunferencias (ASME IX) |  | 2026-10-27 → 2026-10-26 (-1d) | 7d → 4.5d? |
| 18 | Montagem e Soldagem do Fundo Plano e Teto Cônico Autoportante | 2026-10-27 → 2026-10-26 (-1d) | 2026-11-02 → 2026-10-30 (-3d) | 4.25d → 4.25d? |
| 19 | Fabricação/Instalação de Bocais A1-W1, Boca de Visita M1 e Acessórios |  |  | 4.25d → 4.25d? |
| 20 | Execução de Ensaios END (Radiografia RX, LP, Caixa de Vácuo e PMI) |  | 2026-11-11 → 2026-11-10 (-1d) | 2.25d → 2.25d? |
| 21 | Preparação e Execução do Teste Hidrostático (TH) Fabril | 2026-11-11 → 2026-11-10 (-1d) | 2026-11-13 → 2026-11-11 (-2d) | 2d → 2d? |
| 22 | **5.0 PINTURA (Peso: 7%)** | 2026-11-13 → 2026-11-12 (-1d) | 2026-11-20 → 2026-11-18 (-2d) | 7d → 7d? |
| 23 | Decapagem Química e Passivação Integral das Superfícies em Aço Inox | 2026-11-13 → 2026-11-12 (-1d) | 2026-11-18 → 2026-11-16 (-2d) | 3d → 3d? |
| 24 | Jateamento e Pintura Externa dos Acessórios em Aço Carbono (Munsell 5Y 8/12) | 2026-11-18 → 2026-11-17 (-1d) | 2026-11-20 → 2026-11-18 (-2d) | 2d → 2d? |
| 25 | **6.0 EXPEDIÇÃO (Peso: 1%)** | 2026-11-20 → 2026-11-19 (-1d) | 2026-11-25 → 2026-11-23 (-2d) | 5d → 5d? |
| 26 | Emissão, Compilação e Aprovação do Data Book Final com ART (SOP-BRA-019-01) | 2026-11-20 → 2026-11-19 (-1d) | 2026-11-23 → 2026-11-19 (-4d) | 1d → 1d? |
| 27 | Embalagem Especial, Fabricação do Berço e Carregamento | 2026-11-23 → 2026-11-20 (-3d) | 2026-11-24 → 2026-11-20 (-4d) | 1d → 1d? |
| 28 | Transporte Rodoviário Especial CIF e Entrega Técnica no Polo Camaçari/BA | 2026-11-24 → 2026-11-23 (-1d) | 2026-11-25 → 2026-11-23 (-2d) | 1d → 1d? |

## Version 7 (saved 2026-08-26)

Note of the change: feat: implementa extracao obrigatoria de datas de inicio (06/08/2026) e fim (02/11/2026) e sincroniza cronograma e PDF

Last finish 2026-11-23 → 2026-10-21 (-33d).

Changed:

| ID | Task | Start | Finish | Duration |
| --- | --- | --- | --- | --- |
| 1 | **1.0 ATIVIDADES (Peso: 2%)** | 2026-08-31 → 2026-08-06 (-25d) | 2026-09-01 → 2026-08-07 (-25d) |  |
| 2 | Kick-off Meeting & Alinhamento de Requisitos (Oxiteno S.A. / Grupo Indorama) | 2026-08-31 → 2026-08-06 (-25d) | 2026-08-31 → 2026-08-06 (-25d) |  |
| 3 | Formalização do Termo de Abertura do Projeto (TAP) & Governança | 2026-09-01 → 2026-08-07 (-25d) | 2026-09-01 → 2026-08-07 (-25d) |  |
| 4 | **2.0 METODOS E PROCESSOS (Peso: 20%)** | 2026-09-02 → 2026-08-10 (-23d) | 2026-09-21 → 2026-08-26 (-26d) | 20d? → 17d? |
| 5 | Projeto Executivo & Detalhamento Mecânico 2D/3D (TQ-0960-30) | 2026-09-02 → 2026-08-10 (-23d) | 2026-09-08 → 2026-08-13 (-26d) | 4.25d? → 3.75d? |
| 6 | Memórias de Cálculo Estrutural e Pressão (API 650 / ASME) | 2026-09-08 → 2026-08-13 (-26d) | 2026-09-11 → 2026-08-18 (-24d) | 3.5d? → 3.12d? |
| 7 | Elaboração do PIT (Plano de Inspeção e Testes) e EPS/RQPS | 2026-09-11 → 2026-08-19 (-23d) | 2026-09-15 → 2026-08-21 (-25d) | 2.75d? → 2.5d? |
| 8 | Submissão, Análise e Aprovação Técnica pelo Cliente | 2026-09-16 → 2026-08-21 (-26d) | 2026-09-21 → 2026-08-26 (-26d) | 3.5d? → 3.12d? |
| 9 | **3.0 SUPRIMENTOS (Peso: 30%)** | 2026-09-08 → 2026-08-13 (-26d) | 2026-10-07 → 2026-09-08 (-29d) | 30d? → 27d? |
| 10 | Requisição de Compras & Cotação de Matérias-Primas Inox | 2026-09-08 → 2026-08-13 (-26d) | 2026-09-11 → 2026-08-17 (-25d) | 3.12d? → 2.75d? |
| 11 | Fabricação e Entrega de Chapas Inox SA-240 304 e Tubos pela Usina | 2026-09-11 → 2026-08-18 (-24d) | 2026-09-29 → 2026-09-02 (-27d) | 12.75d? → 11.25d? |
| 12 | Aquisição de Forjados, Flanges, Juntas PTFE e Estojos (Paralelo) | 2026-09-11 → 2026-08-18 (-24d) | 2026-09-21 → 2026-08-25 (-27d) | 6.38d? → 5.62d? |
| 13 | Recebimento, Inspeção Dimensional e Rastreabilidade de MP na Fábrica | 2026-09-30 → 2026-09-02 (-28d) | 2026-10-07 → 2026-09-08 (-29d) | 5.25d? → 4.62d? |
| 14 | **4.0 FABRICAÇÃO E MONTAGEM (Peso: 40%)** | 2026-10-07 → 2026-09-09 (-28d) | 2026-11-11 → 2026-10-12 (-30d) | 36d? → 34d? |
| 15 | Traçado, Corte a Plasma e Chanfro das Chapas do Costado e Fundo | 2026-10-07 → 2026-09-09 (-28d) | 2026-10-13 → 2026-09-14 (-29d) | 4.25d? → 3.75d? |
| 16 | Calandragem das Virolas e Pré-Montagem dos Aneis do Costado | 2026-10-13 → 2026-09-15 (-28d) | 2026-10-19 → 2026-09-18 (-31d) | 4.25d? → 3.75d? |
| 17 | Soldagem das Juntas Longitudinais e Circunferencias (ASME IX) | 2026-10-20 → 2026-09-21 (-29d) | 2026-10-26 → 2026-09-25 (-31d) |  |
| 18 | Montagem e Soldagem do Fundo Plano e Teto Cônico Autoportante | 2026-10-26 → 2026-09-25 (-31d) | 2026-10-30 → 2026-09-30 (-30d) | 4.25d? → 3.75d? |
| 19 | Fabricação/Instalação de Bocais A1-W1, Boca de Visita M1 e Acessórios | 2026-11-02 → 2026-10-01 (-32d) | 2026-11-06 → 2026-10-06 (-31d) | 4.25d? → 3.75d? |
| 20 | Execução de Ensaios END (Radiografia RX, LP, Caixa de Vácuo e PMI) | 2026-11-06 → 2026-10-07 (-30d) | 2026-11-10 → 2026-10-08 (-33d) | 2.25d? → 2d? |
| 21 | Preparação e Execução do Teste Hidrostático (TH) Fabril | 2026-11-10 → 2026-10-09 (-32d) | 2026-11-11 → 2026-10-12 (-30d) | 2d? → 1.75d? |
| 22 | **5.0 PINTURA (Peso: 7%)** | 2026-11-12 → 2026-10-13 (-30d) | 2026-11-18 → 2026-10-16 (-33d) | 7d? → 4d? |
| 23 | Decapagem Química e Passivação Integral das Superfícies em Aço Inox | 2026-11-12 → 2026-10-13 (-30d) | 2026-11-16 → 2026-10-15 (-32d) | 3d? → 2.5d? |
| 24 | Jateamento e Pintura Externa dos Acessórios em Aço Carbono (Munsell 5Y 8/12) | 2026-11-17 → 2026-10-15 (-33d) | 2026-11-18 → 2026-10-16 (-33d) | 2d? → 1.75d? |
| 25 | **6.0 EXPEDIÇÃO (Peso: 1%)** | 2026-11-19 → 2026-10-19 (-31d) | 2026-11-23 → 2026-10-21 (-33d) | 5d? → 3d? |
| 26 | Emissão, Compilação e Aprovação do Data Book Final com ART (SOP-BRA-019-01) | 2026-11-19 → 2026-10-19 (-31d) | 2026-11-19 → 2026-10-19 (-31d) |  |
| 27 | Embalagem Especial, Fabricação do Berço e Carregamento | 2026-11-20 → 2026-10-20 (-31d) | 2026-11-20 → 2026-10-20 (-31d) |  |
| 28 | Transporte Rodoviário Especial CIF e Entrega Técnica no Polo Camaçari/BA | 2026-11-23 → 2026-10-21 (-33d) | 2026-11-23 → 2026-10-21 (-33d) |  |

## Version 8 (saved 2026-08-27)

Note of the change: fix(pipeline): torna 100% dos dados da matriz 5W2H, buffers, nivelamento e metadados dinamicos no relatorio PDF e Markdown

Last finish stays 2026-10-21.

Changed:

| ID | Task | Start | Finish | Duration | Other |
| --- | --- | --- | --- | --- | --- |
| 2 | Kick-off Meeting & Alinhamento de Requisitos (INDORAMA (Indovinya) — Camaçari/BA) |  |  |  | was named Kick-off Meeting & Alinhamento de Requisitos (Oxiteno S.A. / Grupo Indorama) |
| 14 | **4.0 FABRICAÇÃO E MONTAGEM (Peso: 40%)** |  | 2026-10-12 → 2026-10-09 (-3d) | 34d? → 31d? |  |
| 17 | Soldagem das Juntas Longitudinais e Circunferencias (ASME IX) |  |  | 4.5d? → 4d? |  |
| 20 | Execução de Ensaios END (Radiografia RX, LP, Caixa de Vácuo e PMI) | 2026-10-07 → 2026-10-06 (-1d) | 2026-10-08 → 2026-10-07 (-1d) |  |  |
| 21 | Preparação e Execução do Teste Hidrostático (TH) Fabril | 2026-10-09 → 2026-10-08 (-1d) | 2026-10-12 → 2026-10-09 (-3d) |  |  |
| 22 | **5.0 PINTURA (Peso: 7%)** | 2026-10-13 → 2026-10-12 (-1d) |  | 4d? → 5d? |  |
| 23 | Decapagem Química e Passivação Integral das Superfícies em Aço Inox | 2026-10-13 → 2026-10-12 (-1d) | 2026-10-15 → 2026-10-14 (-1d) |  |  |

## Version 9 (saved 2026-09-06)

Note of the change: feat: sincroniza projeto com melhorias da skill global (feriados MSPDI e relatorio canonico)

Last finish stays 2026-10-21.

Changed:

| ID | Task | Start | Finish |
| --- | --- | --- | --- |
| 12 | Aquisição de Forjados, Flanges, Juntas PTFE e Estojos (Paralelo) | 2026-08-18 → 2026-08-25 (+7d) | 2026-08-25 → 2026-09-01 (+7d) |

## Version 10 (saved 2026-09-07)

Note of the change: feat(audit): implement 5-layer architecture and 20-rule audit validation engine

Last finish 2026-10-21 → 2026-10-13 (-8d).

Changed:

| ID | Task | Start | Finish | Duration | Predecessors |
| --- | --- | --- | --- | --- | --- |
| 4 | **2.0 METODOS E PROCESSOS (Peso: 20%)** |  | 2026-08-26 → 2026-08-28 (+2d) | 17d? → 19d? |  |
| 6 | Memórias de Cálculo Estrutural e Pressão (API 650 / ASME) | 2026-08-13 → 2026-08-17 (+4d) | 2026-08-18 → 2026-08-20 (+2d) |  |  |
| 7 | Elaboração do PIT (Plano de Inspeção e Testes) e EPS/RQPS | 2026-08-19 → 2026-08-21 (+2d) | 2026-08-21 → 2026-08-25 (+4d) |  |  |
| 8 | Submissão, Análise e Aprovação Técnica pelo Cliente | 2026-08-21 → 2026-08-25 (+4d) | 2026-08-26 → 2026-08-28 (+2d) |  |  |
| 9 | **3.0 SUPRIMENTOS (Peso: 30%)** |  | 2026-09-08 → 2026-09-04 (-4d) | 27d? → 23d? |  |
| 10 | Requisição de Compras & Cotação de Matérias-Primas Inox |  |  | 2.75d? → 2.12d? | 8 → 5 |
| 11 | Fabricação e Entrega de Chapas Inox SA-240 304 e Tubos pela Usina |  | 2026-09-02 → 2026-08-28 (-5d) | 11.25d? → 9d? |  |
| 12 | Aquisição de Forjados, Flanges, Juntas PTFE e Estojos (Paralelo) | 2026-08-25 → 2026-08-21 (-4d) | 2026-09-01 → 2026-08-28 (-4d) |  |  |
| 13 | Recebimento, Inspeção Dimensional e Rastreabilidade de MP na Fábrica | 2026-09-02 → 2026-08-31 (-2d) | 2026-09-08 → 2026-09-04 (-4d) |  |  |
| 14 | **4.0 FABRICAÇÃO E MONTAGEM (Peso: 40%)** | 2026-09-09 → 2026-09-04 (-5d) | 2026-10-09 → 2026-10-02 (-7d) | 31d? → 29d? |  |
| 15 | Traçado, Corte a Plasma e Chanfro das Chapas do Costado e Fundo | 2026-09-09 → 2026-09-04 (-5d) | 2026-09-14 → 2026-09-09 (-5d) |  |  |
| 16 | Calandragem das Virolas e Pré-Montagem dos Aneis do Costado | 2026-09-15 → 2026-09-10 (-5d) | 2026-09-18 → 2026-09-15 (-3d) |  |  |
| 17 | Soldagem das Juntas Longitudinais e Circunferencias (ASME IX) | 2026-09-21 → 2026-09-16 (-5d) | 2026-09-25 → 2026-09-18 (-7d) | 4d? → 2.62d? |  |
| 18 | Montagem e Soldagem do Fundo Plano e Teto Cônico Autoportante | 2026-09-25 → 2026-09-21 (-4d) | 2026-09-30 → 2026-09-23 (-7d) | 3.75d? → 2.75d? |  |
| 19 | Fabricação/Instalação de Bocais A1-W1, Boca de Visita M1 e Acessórios | 2026-10-01 → 2026-09-23 (-8d) | 2026-10-06 → 2026-09-28 (-8d) |  |  |
| 20 | Execução de Ensaios END (Radiografia RX, LP, Caixa de Vácuo e PMI) | 2026-10-06 → 2026-09-29 (-7d) | 2026-10-07 → 2026-09-30 (-7d) |  |  |
| 21 | Preparação e Execução do Teste Hidrostático (TH) Fabril | 2026-10-08 → 2026-10-01 (-7d) | 2026-10-09 → 2026-10-02 (-7d) |  |  |
| 22 | **5.0 PINTURA (Peso: 7%)** | 2026-10-12 → 2026-10-05 (-7d) | 2026-10-16 → 2026-10-09 (-7d) |  |  |
| 23 | Decapagem Química e Passivação Integral das Superfícies em Aço Inox | 2026-10-12 → 2026-10-05 (-7d) | 2026-10-14 → 2026-10-07 (-7d) |  |  |
| 24 | Jateamento e Pintura Externa dos Acessórios em Aço Carbono (Munsell 5Y 8/12) | 2026-10-15 → 2026-10-08 (-7d) | 2026-10-16 → 2026-10-09 (-7d) |  |  |
| 25 | **6.0 EXPEDIÇÃO (Peso: 1%)** | 2026-10-19 → 2026-10-09 (-10d) | 2026-10-21 → 2026-10-13 (-8d) | 3d? → 5d? |  |
| 26 | Emissão, Compilação e Aprovação do Data Book Final com ART (SOP-BRA-019-01) | 2026-10-19 → 2026-10-09 (-10d) | 2026-10-19 → 2026-10-09 (-10d) |  |  |
| 27 | Embalagem Especial, Fabricação do Berço e Carregamento | 2026-10-20 → 2026-10-12 (-8d) | 2026-10-20 → 2026-10-12 (-8d) |  |  |
| 28 | Transporte Rodoviário Especial CIF e Entrega Técnica no Polo Camaçari/BA | 2026-10-21 → 2026-10-13 (-8d) | 2026-10-21 → 2026-10-13 (-8d) |  |  |
