# Fabricação e Fornecimento do Tanque de Armazenamento TQ-960-30/1 (API 650) – Obra 2026-000037

How a schedule from MS Project XML changed from version to version. A marks actual dates.

## Version 1 (saved 2026-08-15)

Note of the change: feat: adicionar pipeline inteligente de EAP ponderada, Monte Carlo e gerador MS Project XML

| ID | WBS | Task | Duration | Start | Finish | Predecessors |
| --- | --- | --- | --- | --- | --- | --- |
| 1 |  | Fabricação e Fornecimento do Tanque de Armazenamento TQ-960-30/1 (API 650) – Obra 2026-000037 | 105d | 2026-08-17 | 2026-11-30 |  |
| 2 | 1.0 | **1.0 ATIVIDADES (Peso: 2%)** | 3d | 2026-08-17 | 2026-08-20 |  |
| 3 |  | Kick-off Meeting & Alinhamento de Requisitos (Oxiteno S.A. / Grupo Indorama) | 1d | 2026-08-17 | 2026-08-18 |  |
| 4 |  | Formalização do Termo de Abertura do Projeto (TAP) & Governança | 1d | 2026-08-19 | 2026-08-20 | 3 |
| 5 | 2.0 | **2.0 METODOS E PROCESSOS (Peso: 20%)** | 26d | 2026-08-21 | 2026-09-16 |  |
| 6 |  | Projeto Executivo & Detalhamento Mecânico 2D/3D (TQ-0960-30) | 4d | 2026-08-21 | 2026-08-27 | 4 |
| 7 |  | Memórias de Cálculo Estrutural e Pressão (API 650 / ASME) | 4d | 2026-08-28 | 2026-09-03 | 6 |
| 8 |  | Elaboração do PIT (Plano de Inspeção e Testes) e EPS/RQPS | 3d | 2026-09-04 | 2026-09-09 | 7 |
| 9 |  | Submissão, Análise e Aprovação Técnica pelo Cliente | 4d | 2026-09-10 | 2026-09-16 | 8 |
| 10 | 3.0 | **3.0 SUPRIMENTOS (Peso: 30%)** | 27d | 2026-08-28 | 2026-09-24 |  |
| 11 |  | Requisição de Compras & Cotação de Matérias-Primas Inox | 3d | 2026-08-28 | 2026-09-02 | 6 |
| 12 |  | Aquisição de Chapas Inox SA-240 304, Tubos e Flanges | 9d | 2026-09-03 | 2026-09-16 | 11 |
| 13 |  | Aquisição de Acessórios Aço Carbono, Juntas PTFE e Estojos | 4d | 2026-09-03 | 2026-09-09 | 11 |
| 14 |  | Recebimento, Inspeção Dimensional e Rastreabilidade de MP | 5d | 2026-09-17 | 2026-09-24 | 12, 13 |
| 15 | 4.0 | **4.0 FABRICAÇÃO E MONTAGEM (Peso: 40%)** | 48d | 2026-09-25 | 2026-11-12 |  |
| 16 |  | Traçado, Corte a Plasma e Chanfro das Chapas do Costado e Fundo | 4d | 2026-09-25 | 2026-10-01 | 9, 14 |
| 17 |  | Calandragem das Virolas e Pré-Montagem dos Aneis do Costado | 4d | 2026-10-02 | 2026-10-08 | 16 |
| 18 |  | Soldagem das Juntas Longitudinais e Circunferencias (ASME IX) | 6d | 2026-10-09 | 2026-10-19 | 17 |
| 19 |  | Montagem e Soldagem do Fundo Plano e Teto Cônico Autoportante | 4d | 2026-10-20 | 2026-10-26 | 18 |
| 20 |  | Fabricação/Instalação de Bocais A1-W1, Boca de Visita M1 e Guarda-Corpo | 4d | 2026-10-27 | 2026-11-02 | 19 |
| 21 |  | Execução de Ensaios END (Radiografia RX, LP, Caixa de Vácuo e PMI) | 3d | 2026-11-03 | 2026-11-06 | 20 |
| 22 |  | Preparação e Execução do Teste Hidrostático (TH) Fabril | 3d | 2026-11-09 | 2026-11-12 | 21 |
| 23 | 5.0 | **5.0 PINTURA (Peso: 7%)** | 7d | 2026-11-13 | 2026-11-20 |  |
| 24 |  | Decapagem Química e Passivação Integral das Superfícies em Aço Inox | 2d | 2026-11-13 | 2026-11-17 | 22 |
| 25 |  | Jateamento e Pintura Externa dos Acessórios em Aço Carbono (Munsell 5Y 8/12) | 2d | 2026-11-18 | 2026-11-20 | 24 |
| 26 | 6.0 | **6.0 EXPEDIÇÃO (Peso: 1%)** | 7d | 2026-11-23 | 2026-11-30 |  |
| 27 |  | Emissão, Compilação e Aprovação do Data Book Final com ART (SOP-BRA-019-01) | 1d | 2026-11-23 | 2026-11-24 | 22, 25 |
| 28 |  | Embalagem Especial, Fabricação do Berço e Carregamento | 1d | 2026-11-25 | 2026-11-26 | 27 |
| 29 |  | Transporte Rodoviário Especial CIF e Entrega Técnica no Polo Camaçari/BA | 1d | 2026-11-27 | 2026-11-30 | 28 |

## Version 2 (saved 2026-08-15)

Note of the change: fix: ordenacao topologica estrita e ajuste do caminho critico da EAP no Monte Carlo

Last finish 2026-11-30 → 2027-01-06 (+37d).

Changed:

| ID | Task | Start | Finish | Duration | Predecessors | Other |
| --- | --- | --- | --- | --- | --- | --- |
| 1 | Fabricação e Fornecimento do Tanque de Armazenamento TQ-960-30/1 (API 650) – Obra 2026-000037 |  | 2026-11-30 → 2027-01-06 (+37d) | 105d → 142d |  |  |
| 5 | **2.0 METODOS E PROCESSOS (Peso: 20%)** |  | 2026-09-16 → 2026-09-17 (+1d) | 26d → 27d |  |  |
| 6 | Projeto Executivo & Detalhamento Mecânico 2D/3D (TQ-0960-30) |  | 2026-08-27 → 2026-08-28 (+1d) | 4d → 4.25d |  |  |
| 7 | Memórias de Cálculo Estrutural e Pressão (API 650 / ASME) | 2026-08-28 → 2026-08-31 (+3d) | 2026-09-03 → 2026-09-04 (+1d) | 4d → 3.5d |  |  |
| 8 | Elaboração do PIT (Plano de Inspeção e Testes) e EPS/RQPS | 2026-09-04 → 2026-09-07 (+3d) | 2026-09-09 → 2026-09-10 (+1d) | 3d → 2.75d |  |  |
| 9 | Submissão, Análise e Aprovação Técnica pelo Cliente | 2026-09-10 → 2026-09-11 (+1d) | 2026-09-16 → 2026-09-17 (+1d) | 4d → 3.5d |  |  |
| 10 | **3.0 SUPRIMENTOS (Peso: 30%)** | 2026-08-28 → 2026-09-18 (+21d) | 2026-09-24 → 2026-10-23 (+29d) | 27d → 35d |  |  |
| 11 | Requisição de Compras & Cotação de Matérias-Primas Inox | 2026-08-28 → 2026-09-18 (+21d) | 2026-09-02 → 2026-09-24 (+22d) | 3d → 3.12d | 6 → 9 |  |
| 12 | Fabricação e Entrega de Chapas Inox SA-240 304 e Tubos pela Usina | 2026-09-03 → 2026-09-25 (+22d) | 2026-09-16 → 2026-10-14 (+28d) | 9d → 12.75d |  | was named Aquisição de Chapas Inox SA-240 304, Tubos e Flanges |
| 13 | Aquisição de Forjados, Flanges, Juntas PTFE e Estojos (Paralelo) | 2026-09-03 → 2026-09-25 (+22d) | 2026-09-09 → 2026-10-06 (+27d) | 4d → 6.38d |  | was named Aquisição de Acessórios Aço Carbono, Juntas PTFE e Estojos |
| 14 | Recebimento, Inspeção Dimensional e Rastreabilidade de MP na Fábrica | 2026-09-17 → 2026-10-15 (+28d) | 2026-09-24 → 2026-10-23 (+29d) | 5d → 5.25d |  | was named Recebimento, Inspeção Dimensional e Rastreabilidade de MP |
| 15 | **4.0 FABRICAÇÃO E MONTAGEM (Peso: 40%)** | 2026-09-25 → 2026-10-26 (+31d) | 2026-11-12 → 2026-12-18 (+36d) | 48d → 53d |  |  |
| 16 | Traçado, Corte a Plasma e Chanfro das Chapas do Costado e Fundo | 2026-09-25 → 2026-10-26 (+31d) | 2026-10-01 → 2026-11-02 (+32d) | 4d → 4.25d | 9, 14 → 14 |  |
| 17 | Calandragem das Virolas e Pré-Montagem dos Aneis do Costado | 2026-10-02 → 2026-11-03 (+32d) | 2026-10-08 → 2026-11-10 (+33d) | 4d → 4.25d |  |  |
| 18 | Soldagem das Juntas Longitudinais e Circunferencias (ASME IX) | 2026-10-09 → 2026-11-11 (+33d) | 2026-10-19 → 2026-11-23 (+35d) | 6d → 7d |  |  |
| 19 | Montagem e Soldagem do Fundo Plano e Teto Cônico Autoportante | 2026-10-20 → 2026-11-24 (+35d) | 2026-10-26 → 2026-12-01 (+36d) | 4d → 4.25d |  |  |
| 20 | Fabricação/Instalação de Bocais A1-W1, Boca de Visita M1 e Acessórios | 2026-10-27 → 2026-12-02 (+36d) | 2026-11-02 → 2026-12-09 (+37d) | 4d → 4.25d |  | was named Fabricação/Instalação de Bocais A1-W1, Boca de Visita M1 e Guarda-Corpo |
| 21 | Execução de Ensaios END (Radiografia RX, LP, Caixa de Vácuo e PMI) | 2026-11-03 → 2026-12-10 (+37d) | 2026-11-06 → 2026-12-15 (+39d) | 3d → 2.25d |  |  |
| 22 | Preparação e Execução do Teste Hidrostático (TH) Fabril | 2026-11-09 → 2026-12-16 (+37d) | 2026-11-12 → 2026-12-18 (+36d) | 3d → 2d |  |  |
| 23 | **5.0 PINTURA (Peso: 7%)** | 2026-11-13 → 2026-12-21 (+38d) | 2026-11-20 → 2026-12-29 (+39d) | 7d → 8d |  |  |
| 24 | Decapagem Química e Passivação Integral das Superfícies em Aço Inox | 2026-11-13 → 2026-12-21 (+38d) | 2026-11-17 → 2026-12-24 (+37d) | 2d → 3d |  |  |
| 25 | Jateamento e Pintura Externa dos Acessórios em Aço Carbono (Munsell 5Y 8/12) | 2026-11-18 → 2026-12-25 (+37d) | 2026-11-20 → 2026-12-29 (+39d) |  |  |  |
| 26 | **6.0 EXPEDIÇÃO (Peso: 1%)** | 2026-11-23 → 2026-12-30 (+37d) | 2026-11-30 → 2027-01-06 (+37d) |  |  |  |
| 27 | Emissão, Compilação e Aprovação do Data Book Final com ART (SOP-BRA-019-01) | 2026-11-23 → 2026-12-30 (+37d) | 2026-11-24 → 2026-12-31 (+37d) |  | 22, 25 → 25 |  |
| 28 | Embalagem Especial, Fabricação do Berço e Carregamento | 2026-11-25 → 2027-01-01 (+37d) | 2026-11-26 → 2027-01-04 (+39d) |  |  |  |
| 29 | Transporte Rodoviário Especial CIF e Entrega Técnica no Polo Camaçari/BA | 2026-11-27 → 2027-01-05 (+39d) | 2026-11-30 → 2027-01-06 (+37d) |  |  |  |
